# Project Timeline
#WIDTH: 12,36,13,19,19,26,24,14
#ALIGN: left,left,center,center,center,left,left,center
Phase,Task,Duration,Start Date,End Date,Dependencies,Owner,Status
Planning,Project Kickoff,1 day,[START_DATE],[START_DATE+1],None,Project Manager,Not Started
Planning,Requirements Gathering,4 days,[START_DATE+1],[START_DATE+5],Project Kickoff,Business Analyst,Not Started
Planning,Solution Architecture Design,7 days,[START_DATE+3],[START_DATE+10],Requirements Gathering,Solution Architect,Not Started
Planning,Infrastructure Planning,7 days,[START_DATE+8],[START_DATE+15],Architecture Design,Infrastructure Architect,Not Started
Design,Detailed Design,10 days,[START_DATE+15],[START_DATE+25],Infrastructure Planning,Technical Lead,Not Started
Design,Security Design,5 days,[START_DATE+18],[START_DATE+23],Architecture Design,Security Architect,Not Started
Design,Integration Design,7 days,[START_DATE+20],[START_DATE+27],Detailed Design,Integration Specialist,Not Started
Build,Environment Setup,7 days,[START_DATE+25],[START_DATE+32],Infrastructure Planning,DevOps Engineer,Not Started
Build,Core Development,20 days,[START_DATE+30],[START_DATE+50],Detailed Design,Development Team,Not Started
Build,Integration Development,12 days,[START_DATE+35],[START_DATE+47],Integration Design,Integration Developer,Not Started
Build,Security Implementation,10 days,[START_DATE+38],[START_DATE+48],Security Design,Security Developer,Not Started
Test,Unit Testing,12 days,[START_DATE+40],[START_DATE+52],Core Development,Development Team,Not Started
Test,Integration Testing,10 days,[START_DATE+50],[START_DATE+60],Integration Development,QA Engineer,Not Started
Test,System Testing,15 days,[START_DATE+55],[START_DATE+70],Unit Testing,QA Team,Not Started
Test,Security Testing,7 days,[START_DATE+60],[START_DATE+67],Security Implementation,Security Tester,Not Started
Test,User Acceptance Testing,10 days,[START_DATE+70],[START_DATE+80],System Testing,Business Users,Not Started
Deploy,Production Environment Setup,7 days,[START_DATE+75],[START_DATE+82],Environment Setup,Infrastructure Team,Not Started
Deploy,Pre-Deployment Testing,5 days,[START_DATE+80],[START_DATE+85],UAT Complete,QA Lead,Not Started
Deploy,Production Deployment,2 days,[START_DATE+85],[START_DATE+87],Production Env Ready,Deployment Team,Not Started
Deploy,User Training Delivery,15 days,[START_DATE+75],[START_DATE+90],UAT Complete,Training Team,Not Started
Deploy,Go-Live Support,7 days,[START_DATE+89],[START_DATE+96],Deployment Complete,Support Team,Not Started
Closure,Hypercare Period,30 days,[START_DATE+96],[START_DATE+126],Go-Live,Support Team,Not Started
Closure,Project Documentation,10 days,[START_DATE+90],[START_DATE+100],All Deliverables,Project Manager,Not Started
Closure,Project Closure,2 days,[START_DATE+126],[START_DATE+128],Hypercare Complete,Project Manager,Not Started
# Milestones
#WIDTH: 10,25,18,77,28,17
#ALIGN: left,left,center,left,left,center
Milestone ID,Milestone Name,Target Date,Success Criteria,Owner,Status
M1,Project Kickoff,[START_DATE],All stakeholders attended kickoff meeting; project charter approved,Project Manager,Not Started
M2,Requirements Approved,[START_DATE+5],Requirements document signed off by business stakeholders,Business Analyst,Not Started
M3,Architecture Approved,[START_DATE+10],Architecture design approved by technical governance board,Solution Architect,Not Started
M4,Design Complete,[START_DATE+25],All detailed design documents completed and approved,Technical Lead,Not Started
M5,Development Complete,[START_DATE+52],All development completed; unit tests passing with 80%+ coverage,Development Team Lead,Not Started
M6,Testing Complete,[START_DATE+80],All test phases completed; no critical/high defects open,QA Lead,Not Started
M7,Go-Live,[START_DATE+87],Solution deployed to production; validation complete,Project Manager,Not Started
M8,Project Closure,[START_DATE+128],Hypercare complete; project formally closed with lessons learned,Project Manager,Not Started
# RACI Matrix
#WIDTH: 30,8,8,8,8,8,8,8,8
#ALIGN: left,center,center,center,center,center,center,center,center
Task/Deliverable,PM,SA,BA,TL,QA,DevOps,SecArch,Client
Project Charter,A,C,C,I,I,I,I,C
Requirements Document,A,C,R,C,C,I,C,C
Architecture Design,A,R,C,C,I,C,C,I
Detailed Design,A,C,I,R,C,C,C,I
Development,A,C,I,R,I,C,I,I
Test Plan,A,I,C,C,R,I,C,I
Test Execution,A,I,I,C,R,I,C,I
Security Implementation,A,C,I,C,C,I,R,I
Infrastructure Setup,A,C,I,C,I,R,C,I
User Training,A,I,C,I,I,I,I,R
Go-Live Approval,A,C,C,C,C,C,C,R
Production Deployment,A,C,I,C,I,R,C,I
Post-Go-Live Support,A,I,I,C,I,R,I,I
# Communications Plan
#WIDTH: 23,19,38,45,19,20
#ALIGN: left,left,left,left,left,center
Meeting Type,Frequency,Participants,Purpose,Owner,Day/Time
Project Kickoff,Once,All stakeholders,Launch project and align on objectives,Project Manager,Day 1
Steering Committee,Bi-weekly,Executive sponsors and PMO,Strategic direction and issue resolution,Project Manager,Alternate Tuesdays
Status Meeting,Weekly,Core project team,Review progress and address blockers,Project Manager,Mondays 10:00
Technical Review,Weekly,Technical leads,Technical design decisions and issues,Solution Architect,Wednesdays 14:00
Risk Review,Bi-weekly,PM and Risk Manager,Risk assessment and mitigation tracking,Risk Manager,Alternate Fridays
Sprint Review,Bi-weekly,Development team and stakeholders,Sprint demo and feedback,Technical Lead,End of Sprint
QA Review,Weekly,QA and Development teams,Test progress and quality metrics,QA Lead,Thursdays 11:00
Go-Live Readiness,Daily (2 weeks pre),Go-live team,Go-live preparation and checklist,Project Manager,Daily 09:00
